ProjectName;ExtractionDate;StatusDate;HoursPerDay;HoursPerWeek;MinutesPerDay;MinutesPerWeek;ID;UniqueID;WBS;OutlineLevel;TaskName;Start;Finish;DurationMinutes;DurationDays;BaselineStart;BaselineFinish;BaselineDurationMinutes;BaselineDurationDays;PercentComplete;PhysicalPercentComplete;ActualStart;ActualFinish;ActualDurationMinutes;ActualDurationDays;RemainingDurationMinutes;RemainingDurationDays;Predecessors;Successors;TotalSlackMinutes;TotalSlackDays;FreeSlackMinutes;FreeSlackDays;Critical;Summary;Milestone;Active;ConstraintType;ConstraintTypeName;ConstraintDate;Deadline;WorkMinutes;ActualWorkMinutes;RemainingWorkMinutes;BaselineWorkMinutes;Cost;BaselineCost;BaselineAvailable
DARCA 2.mpp;2026-09-07 11:49:03;;8.0;40.0;480.0;2400.0;1;1;1;1;EDIFICIO RESIDENCIAL DARCA II;2026-08-26 09:00:00;2026-11-26 19:00:00;35280.0;73.5;2026-08-26 09:00:00;2026-11-26 19:00:00;32160.0;67.0;0.0;0.0;;;0.0;0.0;35280.0;73.5;;;0.0;0.0;0.0;0.0;True;True;False;True;0;As Soon As Possible;;;0.0;0.0;0.0;0.0;0.0;0.0;True
DARCA 2.mpp;2026-09-07 11:49:03;;8.0;40.0;480.0;2400.0;2;3;1.1;2;TRAMO 1;2026-08-26 09:00:00;2026-10-01 13:00:00;13920.0;29.0;2026-08-26 09:00:00;2026-10-05 19:00:00;13920.0;29.0;0.0;0.0;;;0.0;0.0;13920.0;29.0;;;3120.0;6.5;3120.0;6.5;False;True;False;True;0;As Soon As Possible;;;0.0;0.0;0.0;0.0;0.0;0.0;True
DARCA 2.mpp;2026-09-07 11:49:03;;8.0;40.0;480.0;2400.0;3;25;1.1.1;3;Protección de ventanas con plástico;2026-08-26 09:00:00;2026-09-02 13:00:00;2880.0;6.0;2026-08-26 09:00:00;2026-09-02 19:00:00;2880.0;6.0;0.0;0.0;;;0.0;0.0;2880.0;6.0;;4FC-2 días;3120.0;6.5;0.0;0.0;False;False;False;True;0;As Soon As Possible;;;0.0;0.0;0.0;0.0;0.0;0.0;True
DARCA 2.mpp;2026-09-07 11:49:03;;8.0;40.0;480.0;2400.0;4;4;1.1.2;3;Limpieza de fachada en ladrillo - Prelavado;2026-08-31 15:00:00;2026-09-05 12:00:00;2400.0;5.0;2026-09-01 09:00:00;2026-09-07 19:00:00;2400.0;5.0;0.0;0.0;;;0.0;0.0;2400.0;5.0;3FC-2 días;5FC-2 días;3120.0;6.5;0.0;0.0;False;False;False;True;0;As Soon As Possible;;;0.0;0.0;0.0;0.0;0.0;0.0;True
DARCA 2.mpp;2026-09-07 11:49:03;;8.0;40.0;480.0;2400.0;5;6;1.1.3;3;Reemplazo de piezas rotas o deterioradas,;2026-09-03 15:00:00;2026-09-08 19:00:00;1920.0;4.0;2026-09-04 09:00:00;2026-09-09 19:00:00;1920.0;4.0;0.0;0.0;;;0.0;0.0;1920.0;4.0;4FC-2 días;6CC;3120.0;6.5;0.0;0.0;False;False;False;True;0;As Soon As Possible;;;0.0;0.0;0.0;0.0;0.0;0.0;True
DARCA 2.mpp;2026-09-07 11:49:03;;8.0;40.0;480.0;2400.0;6;7;1.1.4;3;Suministro y aplicación de mortero;2026-09-03 15:00:00;2026-09-11 19:00:00;3360.0;7.0;2026-09-04 09:00:00;2026-09-14 19:00:00;3360.0;7.0;0.0;0.0;;;0.0;0.0;3360.0;7.0;5CC;7FC-1 día;3120.0;6.5;0.0;0.0;False;False;False;True;0;As Soon As Possible;;;0.0;0.0;0.0;0.0;0.0;0.0;True
DARCA 2.mpp;2026-09-07 11:49:03;;8.0;40.0;480.0;2400.0;7;8;1.1.5;3;Lavado con rinse o ácido especializado;2026-09-11 09:00:00;2026-09-17 13:00:00;2400.0;5.0;2026-09-14 09:00:00;2026-09-18 19:00:00;2400.0;5.0;0.0;0.0;;;0.0;0.0;2400.0;5.0;6FC-1 día;"8;11";3120.0;6.5;0.0;0.0;False;False;False;True;0;As Soon As Possible;;;0.0;0.0;0.0;0.0;0.0;0.0;True
DARCA 2.mpp;2026-09-07 11:49:03;;8.0;40.0;480.0;2400.0;8;9;1.1.6;3;Aplicación SIKA impermeabilizante 10 años;2026-09-17 15:00:00;2026-09-22 19:00:00;1920.0;4.0;2026-09-21 09:00:00;2026-09-24 19:00:00;1920.0;4.0;0.0;0.0;;;0.0;0.0;1920.0;4.0;7;9FC-2 días;3120.0;6.5;0.0;0.0;False;False;False;True;0;As Soon As Possible;;;0.0;0.0;0.0;0.0;0.0;0.0;True
DARCA 2.mpp;2026-09-07 11:49:03;;8.0;40.0;480.0;2400.0;9;24;1.1.7;3;Pintura de marcos y flanches, aplicación de silicona antihongos;2026-09-21 09:00:00;2026-09-24 19:00:00;1920.0;4.0;2026-09-23 09:00:00;2026-09-28 19:00:00;1920.0;4.0;0.0;0.0;;;0.0;0.0;1920.0;4.0;8FC-2 días;10;3120.0;6.5;0.0;0.0;False;False;False;True;0;As Soon As Possible;;;0.0;0.0;0.0;0.0;0.0;0.0;True
DARCA 2.mpp;2026-09-07 11:49:03;;8.0;40.0;480.0;2400.0;10;11;1.1.8;3;Lavado de vidrios, incluyendo flanches;2026-09-25 09:00:00;2026-10-01 13:00:00;2400.0;5.0;2026-09-29 09:00:00;2026-10-05 19:00:00;2400.0;5.0;0.0;0.0;;;0.0;0.0;2400.0;5.0;9;16;3120.0;6.5;0.0;0.0;False;False;False;True;0;As Soon As Possible;;;0.0;0.0;0.0;0.0;0.0;0.0;True
DARCA 2.mpp;2026-09-07 11:49:03;;8.0;40.0;480.0;2400.0;11;12;1.1.9;3;Limpieza de tuberías de cobre;2026-09-17 15:00:00;2026-09-21 19:00:00;1440.0;3.0;2026-09-21 09:00:00;2026-09-23 19:00:00;1440.0;3.0;0.0;0.0;;;0.0;0.0;1440.0;3.0;7;12FC-1 día;22800.0;47.5;0.0;0.0;False;False;False;True;0;As Soon As Possible;;;0.0;0.0;0.0;0.0;0.0;0.0;True
DARCA 2.mpp;2026-09-07 11:49:03;;8.0;40.0;480.0;2400.0;12;15;1.1.10;3;Lavado de concreto en fachada flotante,;2026-09-21 09:00:00;2026-09-23 19:00:00;1440.0;3.0;2026-09-23 09:00:00;2026-09-25 19:00:00;1440.0;3.0;0.0;0.0;;;0.0;0.0;1440.0;3.0;11FC-1 día;13;22800.0;47.5;0.0;0.0;False;False;False;True;0;As Soon As Possible;;;0.0;0.0;0.0;0.0;0.0;0.0;True
DARCA 2.mpp;2026-09-07 11:49:03;;8.0;40.0;480.0;2400.0;13;16;1.1.11;3;Lijado y limpieza de ductos de gas en áreas de cocina;2026-09-24 09:00:00;2026-09-28 13:00:00;1440.0;3.0;2026-09-28 09:00:00;2026-09-30 19:00:00;1440.0;3.0;0.0;0.0;;;0.0;0.0;1440.0;3.0;12;14CC;22800.0;47.5;0.0;0.0;False;False;False;True;0;As Soon As Possible;;;0.0;0.0;0.0;0.0;0.0;0.0;True
DARCA 2.mpp;2026-09-07 11:49:03;;8.0;40.0;480.0;2400.0;14;17;1.1.12;3;Limpieza de rejillas de contadores;2026-09-24 09:00:00;2026-09-28 13:00:00;1440.0;3.0;2026-09-28 09:00:00;2026-09-30 19:00:00;1440.0;3.0;0.0;0.0;;;0.0;0.0;1440.0;3.0;13CC;;22800.0;47.5;22800.0;47.5;False;False;False;True;0;As Soon As Possible;;;0.0;0.0;0.0;0.0;0.0;0.0;True
DARCA 2.mpp;2026-09-07 11:49:03;;8.0;40.0;480.0;2400.0;15;26;1.2;2;TRAMO 2;2026-10-01 15:00:00;2026-11-06 19:00:00;13920.0;29.0;2026-10-06 09:00:00;2026-11-13 19:00:00;13920.0;29.0;0.0;0.0;;;0.0;0.0;13920.0;29.0;;;3120.0;6.5;3120.0;6.5;False;True;False;True;0;As Soon As Possible;;;0.0;0.0;0.0;0.0;0.0;0.0;True
DARCA 2.mpp;2026-09-07 11:49:03;;8.0;40.0;480.0;2400.0;16;27;1.2.1;3;Protección de ventanas con plástico;2026-10-01 15:00:00;2026-10-08 19:00:00;2880.0;6.0;2026-10-06 09:00:00;2026-10-13 19:00:00;2880.0;6.0;0.0;0.0;;;0.0;0.0;2880.0;6.0;10;17FC-2 días;3120.0;6.5;0.0;0.0;False;False;False;True;0;As Soon As Possible;;;0.0;0.0;0.0;0.0;0.0;0.0;True
DARCA 2.mpp;2026-09-07 11:49:03;;8.0;40.0;480.0;2400.0;17;28;1.2.2;3;Limpieza de fachada en ladrillo - Prelavado;2026-10-07 09:00:00;2026-10-13 13:00:00;2400.0;5.0;2026-10-12 09:00:00;2026-10-16 19:00:00;2400.0;5.0;0.0;0.0;;;0.0;0.0;2400.0;5.0;16FC-2 días;18FC-2 días;3120.0;6.5;0.0;0.0;False;False;False;True;0;As Soon As Possible;;;0.0;0.0;0.0;0.0;0.0;0.0;True
DARCA 2.mpp;2026-09-07 11:49:03;;8.0;40.0;480.0;2400.0;18;29;1.2.3;3;Reemplazo de piezas rotas o deterioradas,;2026-10-10 08:00:00;2026-10-15 13:00:00;1920.0;4.0;2026-10-15 09:00:00;2026-10-20 19:00:00;1920.0;4.0;0.0;0.0;;;0.0;0.0;1920.0;4.0;17FC-2 días;19CC;3120.0;6.5;0.0;0.0;False;False;False;True;0;As Soon As Possible;;;0.0;0.0;0.0;0.0;0.0;0.0;True
DARCA 2.mpp;2026-09-07 11:49:03;;8.0;40.0;480.0;2400.0;19;30;1.2.4;3;Suministro y aplicación de mortero;2026-10-10 08:00:00;2026-10-19 19:00:00;3360.0;7.0;2026-10-15 09:00:00;2026-10-23 19:00:00;3360.0;7.0;0.0;0.0;;;0.0;0.0;3360.0;7.0;18CC;20FC-1 día;3120.0;6.5;0.0;0.0;False;False;False;True;0;As Soon As Possible;;;0.0;0.0;0.0;0.0;0.0;0.0;True
DARCA 2.mpp;2026-09-07 11:49:03;;8.0;40.0;480.0;2400.0;20;31;1.2.5;3;Lavado con rinse o ácido especializado;2026-10-19 09:00:00;2026-10-23 19:00:00;2400.0;5.0;2026-10-23 09:00:00;2026-10-29 19:00:00;2400.0;5.0;0.0;0.0;;;0.0;0.0;2400.0;5.0;19FC-1 día;"21;24";3120.0;6.5;0.0;0.0;False;False;False;True;0;As Soon As Possible;;;0.0;0.0;0.0;0.0;0.0;0.0;True
DARCA 2.mpp;2026-09-07 11:49:03;;8.0;40.0;480.0;2400.0;21;32;1.2.6;3;Aplicación SIKA impermeabilizante 10 años;2026-10-24 08:00:00;2026-10-29 13:00:00;1920.0;4.0;2026-10-30 09:00:00;2026-11-04 19:00:00;1920.0;4.0;0.0;0.0;;;0.0;0.0;1920.0;4.0;20;22FC-2 días;3120.0;6.5;0.0;0.0;False;False;False;True;0;As Soon As Possible;;;0.0;0.0;0.0;0.0;0.0;0.0;True
DARCA 2.mpp;2026-09-07 11:49:03;;8.0;40.0;480.0;2400.0;22;33;1.2.7;3;Pintura de marcos y flanches, aplicación de silicona antihongos;2026-10-27 15:00:00;2026-10-31 12:00:00;1920.0;4.0;2026-11-03 09:00:00;2026-11-06 19:00:00;1920.0;4.0;0.0;0.0;;;0.0;0.0;1920.0;4.0;21FC-2 días;23;3120.0;6.5;0.0;0.0;False;False;False;True;0;As Soon As Possible;;;0.0;0.0;0.0;0.0;0.0;0.0;True
DARCA 2.mpp;2026-09-07 11:49:03;;8.0;40.0;480.0;2400.0;23;34;1.2.8;3;Lavado de vidrios, incluyendo flanches;2026-11-02 09:00:00;2026-11-06 19:00:00;2400.0;5.0;2026-11-09 09:00:00;2026-11-13 19:00:00;2400.0;5.0;0.0;0.0;;;0.0;0.0;2400.0;5.0;22;29;3120.0;6.5;0.0;0.0;False;False;False;True;0;As Soon As Possible;;;0.0;0.0;0.0;0.0;0.0;0.0;True
DARCA 2.mpp;2026-09-07 11:49:03;;8.0;40.0;480.0;2400.0;24;35;1.2.9;3;Limpieza de tuberías de cobre;2026-10-24 08:00:00;2026-10-28 13:00:00;1440.0;3.0;2026-10-30 09:00:00;2026-11-03 19:00:00;1440.0;3.0;0.0;0.0;;;0.0;0.0;1440.0;3.0;20;25FC-1 día;8880.0;18.5;0.0;0.0;False;False;False;True;0;As Soon As Possible;;;0.0;0.0;0.0;0.0;0.0;0.0;True
DARCA 2.mpp;2026-09-07 11:49:03;;8.0;40.0;480.0;2400.0;25;36;1.2.10;3;Lavado de concreto en fachada flotante externo;2026-10-27 15:00:00;2026-10-30 13:00:00;1440.0;3.0;2026-11-03 09:00:00;2026-11-05 19:00:00;1440.0;3.0;0.0;0.0;;;0.0;0.0;1440.0;3.0;24FC-1 día;26;8880.0;18.5;0.0;0.0;False;False;False;True;0;As Soon As Possible;;;0.0;0.0;0.0;0.0;0.0;0.0;True
DARCA 2.mpp;2026-09-07 11:49:03;;8.0;40.0;480.0;2400.0;26;37;1.2.11;3;Lijado y limpieza de ductos de gas en áreas de cocina;2026-10-30 15:00:00;2026-11-03 19:00:00;1440.0;3.0;2026-11-06 09:00:00;2026-11-10 19:00:00;1440.0;3.0;0.0;0.0;;;0.0;0.0;1440.0;3.0;25;27CC;8880.0;18.5;0.0;0.0;False;False;False;True;0;As Soon As Possible;;;0.0;0.0;0.0;0.0;0.0;0.0;True
DARCA 2.mpp;2026-09-07 11:49:03;;8.0;40.0;480.0;2400.0;27;38;1.2.12;3;Limpieza de rejillas de contadores;2026-10-30 15:00:00;2026-11-03 19:00:00;1440.0;3.0;2026-11-06 09:00:00;2026-11-10 19:00:00;1440.0;3.0;0.0;0.0;;;0.0;0.0;1440.0;3.0;26CC;;8880.0;18.5;8880.0;18.5;False;False;False;True;0;As Soon As Possible;;;0.0;0.0;0.0;0.0;0.0;0.0;True
DARCA 2.mpp;2026-09-07 11:49:03;;8.0;40.0;480.0;2400.0;28;19;1.3;2;TRAMO 3 - INTERNO;2026-11-07 08:00:00;2026-11-26 19:00:00;7440.0;15.5;2026-11-16 09:00:00;2026-11-26 19:00:00;4320.0;9.0;0.0;0.0;;;0.0;0.0;7440.0;15.5;;;0.0;0.0;0.0;0.0;True;True;False;True;0;As Soon As Possible;;;0.0;0.0;0.0;0.0;0.0;0.0;True
DARCA 2.mpp;2026-09-07 11:49:03;;8.0;40.0;480.0;2400.0;29;21;1.3.1;3;Lavado de concreto en fachada flotante interno;2026-11-07 08:00:00;2026-11-11 13:00:00;1440.0;3.0;2026-11-16 09:00:00;2026-11-18 19:00:00;1440.0;3.0;0.0;0.0;;;0.0;0.0;1440.0;3.0;23;30;3120.0;6.5;0.0;0.0;False;False;False;True;0;As Soon As Possible;;;0.0;0.0;0.0;0.0;0.0;0.0;True
DARCA 2.mpp;2026-09-07 11:49:03;;8.0;40.0;480.0;2400.0;30;23;1.3.2;3;Resane de muros laterales y pintura;2026-11-11 15:00:00;2026-11-14 12:00:00;1440.0;3.0;2026-11-19 09:00:00;2026-11-23 19:00:00;1440.0;3.0;0.0;0.0;;;0.0;0.0;1440.0;3.0;29;31;3120.0;6.5;3120.0;6.5;False;False;False;True;0;As Soon As Possible;;;0.0;0.0;0.0;0.0;0.0;0.0;True
DARCA 2.mpp;2026-09-07 11:49:03;;8.0;40.0;480.0;2400.0;31;22;1.3.3;3;Lavado de vidrios, incluyendo la marquesina.;2026-11-24 09:00:00;2026-11-26 19:00:00;1440.0;3.0;2026-11-24 09:00:00;2026-11-26 19:00:00;1440.0;3.0;0.0;0.0;;;0.0;0.0;1440.0;3.0;30;32;0.0;0.0;0.0;0.0;True;False;False;True;6;Finish No Earlier Than;2026-11-26 19:00:00;;0.0;0.0;0.0;0.0;0.0;0.0;True
DARCA 2.mpp;2026-09-07 11:49:03;;8.0;40.0;480.0;2400.0;32;39;2;1;TERMINACION OBRA;2026-11-26 19:00:00;2026-11-26 19:00:00;0.0;0.0;2026-11-26 19:00:00;2026-11-26 19:00:00;0.0;0.0;0.0;0.0;;;0.0;0.0;0.0;0.0;31;;0.0;0.0;0.0;0.0;True;False;True;True;0;As Soon As Possible;;;0.0;0.0;0.0;0.0;0.0;0.0;True
